# Relaunch der RZ-Webseite

Schedule from MS Project, 2015-05-08 to 2015-09-30, A marks actual dates.

## Calendars

- Standard: Mon-Fri 08:00-12:00, 13:00-17:00; Sat-Sun off.

## Resources

| Resource |
| --- |
| Alle Teammitglieder |
| Bauer, Huth, Vogl |
| Häring |
| Bauer |
| Häring, Huth |
| Häring, Vogl |
| Häring, Huth, Vogl |
| Huth |
| Fabian Huth |
| Bauer, Häring |
| Huth, Vogl |
| Vogl |
| Bauer, Häring, Huth |

## Schedule

| ID | WBS | Task | Type | Duration | Start | Finish | Predecessors | Complete | Remaining | Total slack | Resources | Work | Actual work |
| --- | --- | --- | --- | --- | --- | --- | --- | --- | --- | --- | --- | --- | --- |
| 1 | 1 | **Projektstart und Feldlegung des Projektumfanges** |  | 3d | 2015-05-08 A | 2015-05-13 A |  | 100% |  |  |  | 24h | 24h |
| 2 | 1.1 | Kick-Off Meeting mit den Stakeholdern | manual | 1d | 2015-05-08 A | 2015-05-08 A |  | 100% |  |  | Alle Teammitglieder | 8h | 8h |
| 3 | 1.2 | RZ-Mitarbeiterschulung (Imperia) | manual | 1d | 2015-05-11 A | 2015-05-11 A | 2 | 100% |  |  | Alle Teammitglieder | 8h | 8h |
| 4 | 1.3 | Festlegung des Projektumfangs mit Raphael Wimmer | manual | 1d | 2015-05-12 A | 2015-05-12 A | 3 | 100% |  |  | Alle Teammitglieder | 8h | 8h |
| 5 | 1.4 | Festlegung des Projektumfangs mit allen Beteiligten | milestone, manual | 0d | 2015-05-13 A | 2015-05-13 A | 4 | 100% |  |  |  |  |  |
| 6 | 2 | **Anforderungsanalyse** |  | 83d | 2015-05-13 A | 2015-09-04 |  | 78% | 17.92d | 0d |  | 704h | 552h |
| 7 | 2.1 | Konkurrenzanalyse anderer deutschsprachiger RZ-Webseiten | manual | 5d | 2015-05-13 A | 2015-05-19 |  | 80% | 1d |  | Bauer, Huth, Vogl | 40h | 32h |
| 8 | 2.2 | Konkurrenzanalyse internationaler RZ-Webseiten | manual | 5d | 2015-05-13 A | 2015-05-19 A |  | 100% |  |  | Häring | 40h | 40h |
| 9 | 2.3 | Einarbeitung in Piwik | manual | 5d | 2015-05-20 A | 2015-05-26 A |  | 100% |  |  | Bauer | 40h | 40h |
| 10 | 2.4 | Erstellung einer Sitemap der aktuellen Inhalte der Webseite | manual | 5d | 2015-05-20 A | 2015-05-26 A |  | 100% |  |  | Häring, Huth, Vogl | 40h | 40h |
| 11 | 2.5 | Hintergrundrecherche zum Crawlen von Webseiten | manual | 3d | 2015-05-27 A | 2015-05-29 |  | 33% | 2d |  | Huth | 24h | 8h |
| 12 | 2.6 | Analyse der Inhalte der aktuellen RZ-Webseite | manual | 5d | 2015-06-01 A | 2015-06-05 A |  | 100% |  |  | Huth | 40h | 40h |
| 13 | 2.7 | Piwik-Analyse | manual | 5d | 2015-06-15 A | 2015-06-19 A |  | 100% |  |  | Bauer | 40h | 40h |
| 14 | 2.8 | Contextual Inquiry Studierende (Vorbereitung + Durchführung) | manual | 10d | 2015-06-22 A | 2015-07-03 A |  | 100% |  |  | Alle Teammitglieder | 80h | 80h |
| 15 | 2.9 | Erstellung des SRS-Templates | manual | 5d | 2015-07-06 A | 2015-07-10 A |  | 100% |  |  | Häring, Vogl | 40h | 40h |
| 16 | 2.10 | Besprechung und Verbesserung des SRS-Templats | manual | 5d | 2015-07-13 A | 2015-07-17 A |  | 100% |  |  | Alle Teammitglieder | 40h | 40h |
| 17 | 2.11 | Contextual Inquiry Mitarbeiter (Vorbereitung + Durchführung) | manual | 6d | 2015-07-20 | 2015-07-27 |  |  |  |  | Alle Teammitglieder | 48h |  |
| 18 | 2.12 | Erstellung des Fragebogens | manual | 9d | 2015-07-28 A | 2015-08-07 A |  | 100% |  |  | Alle Teammitglieder | 72h | 72h |
| 19 | 2.13 | Überarbeitung des Fragebogens | manual | 5d | 2015-08-10 A | 2015-08-14 A |  | 100% |  |  | Alle Teammitglieder | 40h | 40h |
| 20 | 2.14 | Recherche über Online-Cardsorting | manual | 2d | 2015-08-17 A | 2015-08-18 A |  | 100% |  |  | Fabian Huth | 16h | 16h |
| 21 | 2.15 | Vorbereitung des Online-Cardsorting | manual | 3d | 2015-08-19 A | 2015-08-21 A |  | 100% |  |  | Alle Teammitglieder | 24h | 24h |
| 22 | 2.16 | Auswertung des Fragebogens | manual | 2d | 2015-08-31 | 2015-09-01 |  |  |  |  | Huth, Vogl | 16h |  |
| 23 | 2.17 | Auswertung des Card Sortings | manual | 2d | 2015-08-31 | 2015-09-01 |  |  |  |  | Bauer, Häring | 16h |  |
| 24 | 2.18 | Erstellen von Personas und Szenarien | manual | 3d | 2015-09-02 | 2015-09-04 |  |  |  |  | Vogl | 24h |  |
| 25 | 2.19 | Zusammenfassung und Dokumentation der Ergebnisse der Anforderungsanalyse | manual | 3d | 2015-09-02 | 2015-09-04 |  |  |  |  | Bauer, Häring, Huth | 24h |  |
| 26 | 2.20 | Fertigstellung und Abschluss der Anforderungsanalyse | milestone, manual | 0d | 2015-09-04 | 2015-09-04 |  |  |  |  |  |  |  |

| ID | WBS | Task | Type | Duration | Start | Finish | Total slack | Resources | Work |
| --- | --- | --- | --- | --- | --- | --- | --- | --- | --- |
| 27 | 3 | **Erstellung des Prototypen** |  | 5d | 2015-09-07 | 2015-09-11 | 0d |  | 40h |
| 28 | 3.1 | Erarbeitung eines neuen Konzepts | manual | 3d | 2015-09-07 | 2015-09-09 |  | Bauer, Häring | 24h |
| 29 | 3.2 | Implementierung des neuen Konzepts mit Hilfe von Imperia | manual | 2d | 2015-09-10 | 2015-09-11 |  | Bauer, Häring | 16h |
| 30 | 3.3 | Fertigstellung des Prototypen | milestone, manual | 0d | 2015-09-11 | 2015-09-11 |  |  |  |
| 31 | 4 | **Test des Protoypen** |  | 12d | 2015-09-10 | 2015-09-25 | 0d |  | 104h |
| 32 | 4.1 | Erstellung der Testszenarien | manual | 2d | 2015-09-10 | 2015-09-11 |  | Huth, Vogl | 16h |
| 33 | 4.2 | Durchführung des Heuristic Walkthrough | manual | 3d | 2015-09-14 | 2015-09-16 |  | Huth, Vogl | 24h |
| 34 | 4.3 | Durchführung der Tests | manual | 2d | 2015-09-15 | 2015-09-16 |  | Bauer, Häring | 16h |
| 35 | 4.4 | Auswertung der Tets | manual | 1d | 2015-09-18 | 2015-09-18 |  | Bauer, Häring | 8h |
| 36 | 4.5 | Besprechung der Ergebnisse | manual | 1d | 2015-09-21 | 2015-09-21 |  | Alle Teammitglieder | 8h |
| 37 | 4.6 | Überarbeitung des Prototypen | manual | 3d | 2015-09-22 | 2015-09-24 |  | Alle Teammitglieder | 24h |
| 38 | 4.7 | Zusammenfassung und Dokumentation der Ergebnisse der Tests | manual | 1d | 2015-09-25 | 2015-09-25 |  | Alle Teammitglieder | 8h |
| 39 | 4.8 | Abschluss der Testphase | milestone, manual | 0d | 2015-09-25 | 2015-09-25 |  |  |  |
| 40 | 5 | **Projektabschluss** |  | 3d | 2015-09-28 | 2015-09-30 | 0d |  | 24h |
| 41 | 5.1 | Zusammenführung aller bisher erstellten Dokumente zu einen Anforderungsdokument | manual | 1d | 2015-09-28 | 2015-09-28 |  | Alle Teammitglieder | 8h |
| 42 | 5.2 | Fertigstellung der Projekt-Dokumentation | manual | 2d | 2015-09-29 | 2015-09-30 |  | Alle Teammitglieder | 16h |
| 43 | 5.3 | Projektabgabe | milestone, manual | 0d | 2015-09-30 | 2015-09-30 |  |  |  |
